# 计划

Schedule from MS Project, 2016-08-08 to 2016-10-05.
china

## Calendars

- 标准 的副本: Mon-Fri 08:00-12:00, 13:00-17:00; Sat-Sun off.

## Resources

| Resource |
| --- |
| 段实东 |
| 张帆 |
| 郑国鑫 |
| 张恒愉 |
| 郭思远 |

## Schedule

| ID | WBS | Task | Duration | Start | Finish | Predecessors | Total slack | Constraint | Resources | Work |
| --- | --- | --- | --- | --- | --- | --- | --- | --- | --- | --- |
| 1 | 1 | **O2O前端重构计划** | 43d? | 2016-08-08 08:00 | 2016-10-05 17:00 |  | 0d |  | 段实东 | 992h |
| 2 | 1.1 | 首页 | 0.5d? | 2016-08-08 08:00 | 2016-08-08 12:00 |  | 0d | start no earlier than 2016-08-08 08:00 | 段实东 | 4h |
| 3 | 1.2 | 登录与注册 | 0.5d? | 2016-08-08 13:00 | 2016-08-08 17:00 | 2 | 0d |  | 段实东 | 4h |
| 4 | 1.3 | 申请入驻与审核状态 | 0.5d? | 2016-08-09 08:00 | 2016-08-09 12:00 | 3 | 0d |  | 段实东 | 4h |
| 5 | 1.4 | 通用组件整理与公用组件提取与实现 | 2d | 2016-08-09 13:00 | 2016-08-11 12:00 | 4 | 0d |  | 段实东 | 16h |
| 6 | 1.5 | 账号设置 | 0.5d? | 2016-08-11 13:00 | 2016-08-11 17:00 | 5 | 0d |  | 段实东 | 4h |
| 7 | 1.6 | **店铺** | 6d? | 2016-08-12 08:00 | 2016-08-19 17:00 |  | 0d |  | 段实东 | 96h |
| 8 | 1.6.1 | （店长）店铺概况 | 0.5d? | 2016-08-12 08:00 | 2016-08-12 12:00 | 6 | 0d |  | 段实东 | 4h |
| 9 | 1.6.2 | 查看入驻 | 0.5d? | 2016-08-12 13:00 | 2016-08-12 17:00 | 8 | 0d | finish no earlier than 2016-06-28 17:00 | 段实东 | 4h |
| 10 | 1.6.3 | 店铺管理 | 1d? | 2016-08-15 08:00 | 2016-08-15 17:00 | 9 | 0d | finish no earlier than 2016-06-29 17:00 | 段实东 | 8h |
| 11 | 1.6.4 | 添加修改店铺 | 1d | 2016-08-16 08:00 | 2016-08-16 17:00 | 10 | 0d | start no earlier than 2016-06-30 08:00 | 段实东 | 8h |
| 12 | 1.6.5 | 复制，关闭店铺。设置店长 | 1d? | 2016-08-17 08:00 | 2016-08-17 17:00 | 11 | 0d | start no earlier than 2016-07-01 08:00 | 段实东 | 8h |
| 13 | 1.6.6 | （店长）店铺设置 | 1d? | 2016-08-18 08:00 | 2016-08-18 17:00 | 12 | 0d |  | 段实东 | 8h |
| 14 | 1.6.7 | （店长）员工管理 | 1d? | 2016-08-19 08:00 | 2016-08-19 17:00 | 13 | 0d |  | 段实东 | 8h |
| 15 | 1.7 | **商品** | 6d? | 2016-08-22 08:00 | 2016-08-29 17:00 |  | 0d |  | 段实东 | 96h |
| 16 | 1.7.1 | （店长）金价设置 | 0.5d? | 2016-08-22 08:00 | 2016-08-22 12:00 | 14 | 0d | start no earlier than 2016-06-27 08:00 | 段实东 | 4h |
| 17 | 1.7.2 | （店长）商品标签 | 0.5d | 2016-08-22 13:00 | 2016-08-22 17:00 | 16 | 0d |  | 段实东 | 4h |
| 18 | 1.7.3 | （店长）自定义分类 | 0.5d? | 2016-08-23 08:00 | 2016-08-23 12:00 | 17 | 0d | finish no earlier than 2016-07-01 17:00 | 段实东 | 4h |
| 19 | 1.7.4 | 全部商品 出售中 | 0.5d | 2016-08-23 13:00 | 2016-08-23 17:00 | 18 | 0d | finish no earlier than 2016-07-05 17:00 | 段实东 | 4h |
| 20 | 1.7.5 | 全部商品 仓库中 | 0.5d | 2016-08-24 08:00 | 2016-08-24 12:00 | 19 | 0d | finish no earlier than 2016-07-07 17:00 | 段实东 | 4h |
| 21 | 1.7.6 | 全部商品 回收站 | 0.5d? | 2016-08-24 13:00 | 2016-08-24 17:00 | 20 | 0d |  | 段实东 | 4h |
| 22 | 1.7.7 | 全部商品 己售罄 | 0.5d | 2016-08-25 08:00 | 2016-08-25 12:00 | 21 | 0d | finish no earlier than 2016-07-07 17:00 | 段实东 | 4h |
| 23 | 1.7.8 | 一键入库、一键上架 | 0.5d? | 2016-08-25 13:00 | 2016-08-25 17:00 | 22 | 0d |  | 段实东 | 4h |
| 24 | 1.7.9 | 添加商品 选择品类款式 | 0.5d? | 2016-08-26 08:00 | 2016-08-26 12:00 | 23 | 0d |  | 段实东 | 4h |
| 25 | 1.7.10 | 添加商品与修改商器详情 | 0.5d | 2016-08-26 13:00 | 2016-08-26 17:00 | 24 | 0d |  | 段实东 | 4h |
| 26 | 1.7.11 | 添加与修改商品完成页 | 0.5d? | 2016-08-29 08:00 | 2016-08-29 12:00 | 25 | 0d |  | 段实东 | 4h |
| 27 | 1.7.12 | 商品详情 | 0.5d? | 2016-08-29 13:00 | 2016-08-29 17:00 | 26 | 0d |  | 段实东 | 4h |

| ID | WBS | Task | Duration | Start | Finish | Predecessors | Total slack | Resources | Work |
| --- | --- | --- | --- | --- | --- | --- | --- | --- | --- |
| 28 | 1.8 | **订单** | 2d? | 2016-08-30 08:00 | 2016-08-31 17:00 |  | 0d | 段实东 | 32h |
| 29 | 1.8.1 | 订单管理（全部） | 0.5d? | 2016-08-30 08:00 | 2016-08-30 12:00 | 27 | 0d | 段实东 | 4h |
| 30 | 1.8.2 | 订单管理（待核销） | 0.5d? | 2016-08-30 13:00 | 2016-08-30 17:00 | 29 | 0d | 段实东 | 4h |
| 31 | 1.8.3 | 订单管理（己核销） | 0.5d? | 2016-08-31 08:00 | 2016-08-31 12:00 | 30 | 0d | 段实东 | 4h |
| 32 | 1.8.4 | 定单详情 | 0.5d? | 2016-08-31 13:00 | 2016-08-31 17:00 | 31 | 0d | 段实东 | 4h |
| 33 | 1.9 | **（店长）分销** | 4d? | 2016-09-01 08:00 | 2016-09-06 17:00 |  | 0d | 段实东 | 64h |
| 34 | 1.9.1 | 分销概况 | 0.5d? | 2016-09-01 08:00 | 2016-09-01 12:00 | 32 | 0d | 段实东 | 4h |
| 35 | 1.9.2 | 品类佣金 | 1d | 2016-09-01 13:00 | 2016-09-02 12:00 | 34 | 0d | 段实东 | 8h |
| 36 | 1.9.3 | 珠宝顾问管理 | 0.5d? | 2016-09-02 13:00 | 2016-09-02 17:00 | 35 | 0d | 段实东 | 4h |
| 37 | 1.9.4 | 珠宝顾问业绩 | 0.5d? | 2016-09-05 08:00 | 2016-09-05 12:00 | 36 | 0d | 段实东 | 4h |
| 38 | 1.9.5 | 珠宝顾问佣金 | 0.5d? | 2016-09-05 13:00 | 2016-09-05 17:00 | 37 | 0d | 段实东 | 4h |
| 39 | 1.9.6 | 订单佣金 | 0.5d? | 2016-09-06 08:00 | 2016-09-06 12:00 | 38 | 0d | 段实东 | 4h |
| 40 | 1.9.7 | 佣金发放 | 0.5d? | 2016-09-06 13:00 | 2016-09-06 17:00 | 39 | 0d | 段实东 | 4h |
| 41 | 1.10 | **微信** | 9d? | 2016-09-07 08:00 | 2016-09-19 17:00 |  | 0d | 段实东 | 144h |
| 42 | 1.10.1 | 微信账号 | 1d? | 2016-09-07 08:00 | 2016-09-07 17:00 | 40 | 0d | 段实东 | 8h |
| 43 | 1.10.2 | 消息群发 | 1d | 2016-09-08 08:00 | 2016-09-08 17:00 | 42 | 0d | 段实东 | 8h |
| 44 | 1.10.3 | 消息发送记录 | 1d? | 2016-09-09 08:00 | 2016-09-09 17:00 | 43 | 0d | 段实东 | 8h |
| 45 | 1.10.4 | 图文素材 | 1d | 2016-09-12 08:00 | 2016-09-12 17:00 | 44 | 0d | 段实东 | 8h |
| 46 | 1.10.5 | 新建与编辑图文素材 | 1d | 2016-09-13 08:00 | 2016-09-13 17:00 | 45 | 0d | 段实东 | 8h |
| 47 | 1.10.6 | 自动回复 | 1d | 2016-09-14 08:00 | 2016-09-14 17:00 | 46 | 0d | 段实东 | 8h |
| 48 | 1.10.7 | 新建关键词回复 | 1d? | 2016-09-15 08:00 | 2016-09-15 17:00 | 47 | 0d | 段实东 | 8h |
| 49 | 1.10.8 | 自定义菜单 | 1d | 2016-09-16 08:00 | 2016-09-16 17:00 | 48 | 0d | 段实东 | 8h |
| 50 | 1.10.9 | 自定义菜单记录 | 1d? | 2016-09-19 08:00 | 2016-09-19 17:00 | 49 | 0d | 段实东 | 8h |
| 51 | 1.11 | **营销** | 8d? | 2016-09-20 08:00 | 2016-09-29 17:00 |  | 0d | 段实东 | 128h |
| 52 | 1.11.1 | 核销-人人赚 | 1d | 2016-09-20 08:00 | 2016-09-20 17:00 | 50 | 0d | 段实东 | 8h |
| 53 | 1.11.2 | 核销-优惠券 | 1d | 2016-09-21 08:00 | 2016-09-21 17:00 | 52 | 0d | 段实东 | 8h |
| 54 | 1.11.3 | 优惠券 | 1d | 2016-09-22 08:00 | 2016-09-22 17:00 | 53 | 0d | 段实东 | 8h |
| 55 | 1.11.4 | 添加与修改优惠券 | 1d | 2016-09-23 08:00 | 2016-09-23 17:00 | 54 | 0d | 段实东 | 8h |
| 56 | 1.11.5 | 人人赚-扫码关注 | 1d | 2016-09-26 08:00 | 2016-09-26 17:00 | 55 | 0d | 段实东 | 8h |
| 57 | 1.11.6 | 人人赚-获取海报 | 1d? | 2016-09-27 08:00 | 2016-09-27 17:00 | 56 | 0d | 段实东 | 8h |
| 58 | 1.11.7 | 人人赚-积分兑换 | 1d? | 2016-09-28 08:00 | 2016-09-28 17:00 | 57 | 0d | 段实东 | 8h |
| 59 | 1.11.8 | 微互动 | 1d | 2016-09-29 08:00 | 2016-09-29 17:00 | 58 | 0d | 段实东 | 8h |

| ID | WBS | Task | Duration | Start | Finish | Predecessors | Total slack | Resources | Work |
| --- | --- | --- | --- | --- | --- | --- | --- | --- | --- |
| 60 | 1.12 | **客户** | 3d? | 2016-09-30 08:00 | 2016-10-04 17:00 |  | 0d | 段实东 | 48h |
| 61 | 1.12.1 | 粉丝管理 | 1d? | 2016-09-30 08:00 | 2016-09-30 17:00 | 59 | 0d | 段实东 | 8h |
| 62 | 1.12.2 | 标签管理 | 0.5d | 2016-10-03 08:00 | 2016-10-03 12:00 | 61 | 0d | 段实东 | 4h |
| 63 | 1.12.3 | 积分管理 | 1d? | 2016-10-03 13:00 | 2016-10-04 12:00 | 62 | 0d | 段实东 | 8h |
| 64 | 1.12.4 | 会员卡管理 | 0.5d | 2016-10-04 13:00 | 2016-10-04 17:00 | 63 | 0d | 段实东 | 4h |
| 65 | 1.13 | 数据 | 1d? | 2016-10-05 08:00 | 2016-10-05 17:00 | 64 | 0d | 段实东 | 8h |
