# 计划

Schedule from MS Project, 2016-08-09 to 2016-10-11.
china

## Calendars

- 标准 的副本: Mon-Fri 08:00-12:00, 13:00-17:00; Sat-Sun off.

## Resources

| Resource |
| --- |
| 段实东 |
| 张帆 |
| 郑国鑫 |
| 张恒愉 |
| 郭思远 |

## Schedule

| ID | WBS | Task | Duration | Start | Finish | Predecessors | Total slack | Constraint | Resources | Work |
| --- | --- | --- | --- | --- | --- | --- | --- | --- | --- | --- |
| 1 | 1 | **O2O前端重构计划** | 45.12d | 2016-08-09 08:00 | 2016-10-11 09:00 |  | 0d |  | 段实东 | 1059h |
| 2 | 1.1 | 首页 | 4h | 2016-08-09 08:00 | 2016-08-09 12:00 |  | 0d | start no earlier than 2016-08-09 08:00 | 段实东 | 4h |
| 3 | 1.2 | 登录与注册 | 4h | 2016-08-09 13:00 | 2016-08-09 17:00 | 2 | 0d |  | 段实东 | 4h |
| 4 | 1.3 | 申请入驻与审核状态 | 4h | 2016-08-10 08:00 | 2016-08-10 12:00 | 3 | 0d |  | 段实东 | 4h |
| 5 | 1.4 | 账号设置 | 4h | 2016-08-10 13:00 | 2016-08-10 17:00 | 4 | 0d |  | 段实东 | 4h |
| 6 | 1.5 | header与footer组件实现 | 4h | 2016-08-11 08:00 | 2016-08-11 12:00 | 5 | 0d |  | 段实东 | 4h |
| 7 | 1.6 | **店铺** | 7.88d | 2016-08-11 13:00 | 2016-08-23 11:00 |  | 0d |  | 段实东 | 126h |
| 8 | 1.6.1 | 店铺左则组件 | 1h | 2016-08-11 13:00 | 2016-08-11 14:00 | 6 | 0d |  | 段实东 | 1h |
| 9 | 1.6.2 | （店长）店铺概况 | 2h | 2016-08-11 14:00 | 2016-08-11 16:00 | 8 | 0d |  | 段实东 | 2h |
| 10 | 1.6.3 | 查看入驻 | 2h | 2016-08-11 16:00 | 2016-08-12 09:00 | 9 | 0d | finish no earlier than 2016-06-28 17:00 | 段实东 | 2h |
| 11 | 1.6.4 | 店铺管理 | 2h | 2016-08-12 09:00 | 2016-08-12 11:00 | 10 | 0d | finish no earlier than 2016-06-29 17:00 | 段实东 | 2h |
| 12 | 1.6.5 | 店铺管理列表元件组件 | 4h | 2016-08-12 11:00 | 2016-08-12 16:00 | 11 | 0d |  | 段实东 | 4h |
| 13 | 1.6.6 | 分页组件实现 | 4h | 2016-08-12 16:00 | 2016-08-15 11:00 | 12 | 0d |  | 段实东 | 4h |
| 14 | 1.6.7 | 添加修改店铺 | 1d | 2016-08-15 11:00 | 2016-08-16 11:00 | 13 | 0d | start no earlier than 2016-06-30 08:00 | 段实东 | 8h |
| 15 | 1.6.8 | 图片上传组件 | 1d | 2016-08-16 11:00 | 2016-08-17 11:00 | 14 | 0d |  | 段实东 | 8h |
| 16 | 1.6.9 | 选择品牌功能组件 | 4h | 2016-08-17 11:00 | 2016-08-17 16:00 | 15 | 0d |  | 段实东 | 4h |
| 17 | 1.6.10 | 查看店铺（新功能） | 1d | 2016-08-17 16:00 | 2016-08-18 16:00 | 16 | 0d |  | 段实东 | 8h |
| 18 | 1.6.11 | 复制，关闭店铺。设置店长 | 1d | 2016-08-18 16:00 | 2016-08-19 16:00 | 17 | 0d | start no earlier than 2016-07-01 08:00 | 段实东 | 8h |
| 19 | 1.6.12 | （店长）店铺设置-店铺资料 | 4h | 2016-08-19 16:00 | 2016-08-22 11:00 | 18 | 0d |  | 段实东 | 4h |
| 20 | 1.6.13 | （店长）店铺设置-实体门店 | 2h | 2016-08-22 11:00 | 2016-08-22 14:00 | 19 | 0d |  | 段实东 | 2h |
| 21 | 1.6.14 | （店长）店铺设置-退货信息 | 2h | 2016-08-22 14:00 | 2016-08-22 16:00 | 20 | 0d |  | 段实东 | 2h |
| 22 | 1.6.15 | （店长）员工管理模块 | 4h | 2016-08-22 16:00 | 2016-08-23 11:00 | 21 | 0d |  | 段实东 | 4h |
| 23 | 1.7 | **商品** | 9.62d | 2016-08-23 11:00 | 2016-09-05 17:00 |  | 0d |  | 段实东 | 154h |
| 24 | 1.7.1 | 商品左则组件 | 1h | 2016-08-23 11:00 | 2016-08-23 12:00 | 22 | 0d |  | 段实东 | 1h |
| 25 | 1.7.2 | （店长）金价设置 | 2h | 2016-08-23 13:00 | 2016-08-23 15:00 | 24 | 0d | start no earlier than 2016-06-27 08:00 | 段实东 | 2h |
| 26 | 1.7.3 | 添加金价（新功能） | 4h | 2016-08-23 15:00 | 2016-08-24 10:00 | 25 | 0d |  | 段实东 | 4h |
| 27 | 1.7.4 | （店长）商品标签 | 4h | 2016-08-24 10:00 | 2016-08-24 15:00 | 26 | 0d |  | 段实东 | 4h |
| 28 | 1.7.5 | （店长）自定义分类 | 4h | 2016-08-24 15:00 | 2016-08-25 10:00 | 27 | 0d | finish no earlier than 2016-07-01 17:00 | 段实东 | 4h |
| 29 | 1.7.6 | 商品筛选组件 | 4h | 2016-08-25 10:00 | 2016-08-25 15:00 | 28 | 0d |  | 段实东 | 4h |
| 30 | 1.7.7 | 商品列表展示行组件（包含图片放大功能与操作功能元件） | 1d | 2016-08-25 15:00 | 2016-08-26 15:00 | 29 | 0d |  | 段实东 | 8h |
| 31 | 1.7.8 | 全部商品 出售中 | 2h | 2016-08-26 15:00 | 2016-08-26 17:00 | 30 | 0d | finish no earlier than 2016-07-05 17:00 | 段实东 | 2h |
| 32 | 1.7.9 | 全部商品 仓库中 | 2h | 2016-08-29 08:00 | 2016-08-29 10:00 | 31 | 0d | finish no earlier than 2016-07-07 17:00 | 段实东 | 2h |
| 33 | 1.7.10 | 全部商品 回收站 | 2h | 2016-08-29 10:00 | 2016-08-29 12:00 | 32 | 0d |  | 段实东 | 2h |
| 34 | 1.7.11 | 全部商品 己售罄 | 2h | 2016-08-29 13:00 | 2016-08-29 15:00 | 33 | 0d | finish no earlier than 2016-07-07 17:00 | 段实东 | 2h |
| 35 | 1.7.12 | 一键入库、一键上架 | 4h | 2016-08-29 15:00 | 2016-08-30 10:00 | 34 | 0d |  | 段实东 | 4h |
| 36 | 1.7.13 | 添加商品 选择品类款式 | 4h | 2016-08-30 10:00 | 2016-08-30 15:00 | 35 | 0d |  | 段实东 | 4h |
| 37 | 1.7.14 | 多图上传组件 | 1d | 2016-08-30 15:00 | 2016-08-31 15:00 | 36 | 0d |  | 段实东 | 8h |
| 38 | 1.7.15 | 添加商品与修改商器详情 | 4h | 2016-08-31 15:00 | 2016-09-01 10:00 | 37 | 0d |  | 段实东 | 4h |
| 39 | 1.7.16 | 富文本编辑器整合组件 | 1d | 2016-09-01 10:00 | 2016-09-02 10:00 | 38 | 0d |  | 段实东 | 8h |
| 40 | 1.7.17 | 添加与修改商品完成页 | 2h | 2016-09-02 10:00 | 2016-09-02 12:00 | 39 | 0d |  | 段实东 | 2h |
| 41 | 1.7.18 | 图片轮播组件 | 1d | 2016-09-02 13:00 | 2016-09-05 12:00 | 40 | 0d |  | 段实东 | 8h |
| 42 | 1.7.19 | 商品详情 | 4h | 2016-09-05 13:00 | 2016-09-05 17:00 | 41 | 0d |  | 段实东 | 4h |

| ID | WBS | Task | Duration | Start | Finish | Predecessors | Total slack | Resources | Work |
| --- | --- | --- | --- | --- | --- | --- | --- | --- | --- |
| 43 | 1.8 | **订单** | 1d | 2016-09-06 08:00 | 2016-09-06 17:00 |  | 0d | 段实东 | 16h |
| 44 | 1.8.1 | 订单管理（全部） | 2h | 2016-09-06 08:00 | 2016-09-06 10:00 | 42 | 0d | 段实东 | 2h |
| 45 | 1.8.2 | 订单管理（待核销） | 2h | 2016-09-06 10:00 | 2016-09-06 12:00 | 44 | 0d | 段实东 | 2h |
| 46 | 1.8.3 | 订单管理（己核销） | 2h | 2016-09-06 13:00 | 2016-09-06 15:00 | 45 | 0d | 段实东 | 2h |
| 47 | 1.8.4 | 定单详情 | 2h | 2016-09-06 15:00 | 2016-09-06 17:00 | 46 | 0d | 段实东 | 2h |
| 48 | 1.9 | **（店长）分销** | 2d | 2016-09-07 08:00 | 2016-09-08 17:00 |  | 0d | 段实东 | 32h |
| 49 | 1.9.1 | 分销概况 | 2h | 2016-09-07 08:00 | 2016-09-07 10:00 | 47 | 0d | 段实东 | 2h |
| 50 | 1.9.2 | 品类佣金 | 4h | 2016-09-07 10:00 | 2016-09-07 15:00 | 49 | 0d | 段实东 | 4h |
| 51 | 1.9.3 | 珠宝顾问管理 | 2h | 2016-09-07 15:00 | 2016-09-07 17:00 | 50 | 0d | 段实东 | 2h |
| 52 | 1.9.4 | 珠宝顾问业绩 | 2h | 2016-09-08 08:00 | 2016-09-08 10:00 | 51 | 0d | 段实东 | 2h |
| 53 | 1.9.5 | 珠宝顾问佣金 | 2h | 2016-09-08 10:00 | 2016-09-08 12:00 | 52 | 0d | 段实东 | 2h |
| 54 | 1.9.6 | 订单佣金 | 2h | 2016-09-08 13:00 | 2016-09-08 15:00 | 53 | 0d | 段实东 | 2h |
| 55 | 1.9.7 | 佣金发放 | 2h | 2016-09-08 15:00 | 2016-09-08 17:00 | 54 | 0d | 段实东 | 2h |
| 56 | 1.10 | **微信** | 10.62d | 2016-09-09 08:00 | 2016-09-23 14:00 |  | 0d | 段实东 | 170h |
| 57 | 1.10.1 | 左则导航 | 1h | 2016-09-09 08:00 | 2016-09-09 09:00 | 55 | 0d | 段实东 | 1h |
| 58 | 1.10.2 | 微信账号(与相关模块的绑定验证) | 4h | 2016-09-09 09:00 | 2016-09-09 14:00 | 57 | 0d | 段实东 | 4h |
| 59 | 1.10.3 | 群发-表情组件 | 4h | 2016-09-09 14:00 | 2016-09-12 09:00 | 58 | 0d | 段实东 | 4h |
| 60 | 1.10.4 | 群发-图片功能组件 | 4h | 2016-09-12 09:00 | 2016-09-12 14:00 | 59 | 0d | 段实东 | 4h |
| 61 | 1.10.5 | 群发-语音功能组件 | 4h | 2016-09-12 14:00 | 2016-09-13 09:00 | 60 | 0d | 段实东 | 4h |
| 62 | 1.10.6 | 群发-选择图文 | 4h | 2016-09-13 09:00 | 2016-09-13 14:00 | 61 | 0d | 段实东 | 4h |
| 63 | 1.10.7 | 消息群发页 | 4h | 2016-09-13 14:00 | 2016-09-14 09:00 | 62 | 0d | 段实东 | 4h |
| 64 | 1.10.8 | 消息发送记录 | 1d | 2016-09-14 09:00 | 2016-09-15 09:00 | 63 | 0d | 段实东 | 8h |
| 65 | 1.10.9 | 图文素材 | 1d | 2016-09-15 09:00 | 2016-09-16 09:00 | 64 | 0d | 段实东 | 8h |
| 66 | 1.10.10 | 新建与编辑图文素材 | 1d | 2016-09-16 09:00 | 2016-09-19 09:00 | 65 | 0d | 段实东 | 8h |
| 67 | 1.10.11 | 自动回复页 | 1d | 2016-09-19 09:00 | 2016-09-20 09:00 | 66 | 0d | 段实东 | 8h |
| 68 | 1.10.12 | 添加关键词回复 | 4h | 2016-09-20 09:00 | 2016-09-20 14:00 | 67 | 0d | 段实东 | 4h |
| 69 | 1.10.13 | 关注后回复 | 4h | 2016-09-20 14:00 | 2016-09-21 09:00 | 68 | 0d | 段实东 | 4h |
| 70 | 1.10.14 | 自定义菜单页 | 4h | 2016-09-21 09:00 | 2016-09-21 14:00 | 69 | 0d | 段实东 | 4h |
| 71 | 1.10.15 | 菜单预览与操作模块(组件摸拟微信显示) | 4h | 2016-09-21 14:00 | 2016-09-22 09:00 | 70 | 0d | 段实东 | 4h |
| 72 | 1.10.16 | 添加编辑子菜单模块（有活动新功能） | 4h | 2016-09-22 09:00 | 2016-09-22 14:00 | 71 | 0d | 段实东 | 4h |
| 73 | 1.10.17 | 自定义菜单选择图文素才与添加 | 4h | 2016-09-22 14:00 | 2016-09-23 09:00 | 72 | 0d | 段实东 | 4h |
| 74 | 1.10.18 | 自定义菜单记录 | 4h | 2016-09-23 09:00 | 2016-09-23 14:00 | 73 | 0d | 段实东 | 4h |

| ID | WBS | Task | Duration | Start | Finish | Predecessors | Total slack | Resources | Work |
| --- | --- | --- | --- | --- | --- | --- | --- | --- | --- |
| 75 | 1.11 | **营销** | 7.25d | 2016-09-23 14:00 | 2016-10-04 16:00 |  | 0d | 段实东 | 116h |
| 76 | 1.11.1 | 核销-人人赚 | 4h | 2016-09-23 14:00 | 2016-09-26 09:00 | 74 | 0d | 段实东 | 4h |
| 77 | 1.11.2 | 核销-优惠券 | 4h | 2016-09-26 09:00 | 2016-09-26 14:00 | 76 | 0d | 段实东 | 4h |
| 78 | 1.11.3 | 优惠券列表展示页 | 4h | 2016-09-26 14:00 | 2016-09-27 09:00 | 77 | 0d | 段实东 | 4h |
| 79 | 1.11.4 | 优惠券添加表单功能 | 1d | 2016-09-27 09:00 | 2016-09-28 09:00 | 78 | 0d | 段实东 | 8h |
| 80 | 1.11.5 | 优惠券查看预览功能 | 4h | 2016-09-28 09:00 | 2016-09-28 14:00 | 79 | 0d | 段实东 | 4h |
| 81 | 1.11.6 | 添加与修改优惠券 | 1d | 2016-09-28 14:00 | 2016-09-29 14:00 | 80 | 0d | 段实东 | 8h |
| 82 | 1.11.7 | 人人赚-扫码关注 | 1d | 2016-09-29 14:00 | 2016-09-30 14:00 | 81 | 0d | 段实东 | 8h |
| 83 | 1.11.8 | 人人赚-获取海报 | 1d | 2016-09-30 14:00 | 2016-10-03 14:00 | 82 | 0d | 段实东 | 8h |
| 84 | 1.11.9 | 人人赚-积分兑换 | 1d | 2016-10-03 14:00 | 2016-10-04 14:00 | 83 | 0d | 段实东 | 8h |
| 85 | 1.11.10 | 微互动 | 2h | 2016-10-04 14:00 | 2016-10-04 16:00 | 84 | 0d | 段实东 | 2h |
| 86 | 1.12 | **会员** | 3.75d | 2016-10-04 16:00 | 2016-10-10 14:00 |  | 0d | 段实东 | 60h |
| 87 | 1.12.1 | 会员管理页 | 4h | 2016-10-04 16:00 | 2016-10-05 11:00 | 85 | 0d | 段实东 | 4h |
| 88 | 1.12.2 | 会员筛选功能 | 4h | 2016-10-05 11:00 | 2016-10-05 16:00 | 87 | 0d | 段实东 | 4h |
| 89 | 1.12.3 | 会员操作、会员设置等功能 | 4h | 2016-10-05 16:00 | 2016-10-06 11:00 | 88 | 0d | 段实东 | 4h |
| 90 | 1.12.4 | 标签管理 | 4h | 2016-10-06 11:00 | 2016-10-06 16:00 | 89 | 0d | 段实东 | 4h |
| 91 | 1.12.5 | 积分管理 | 1d | 2016-10-06 16:00 | 2016-10-07 16:00 | 90 | 0d | 段实东 | 8h |
| 92 | 1.12.6 | 会员积分详情 | 2h | 2016-10-07 16:00 | 2016-10-10 09:00 | 91 | 0d | 段实东 | 2h |
| 93 | 1.12.7 | 会员卡管理 | 4h | 2016-10-10 09:00 | 2016-10-10 14:00 | 92 | 0d | 段实东 | 4h |
| 94 | 1.13 | 数据 | 4h | 2016-10-10 14:00 | 2016-10-11 09:00 | 93 | 0d | 段实东 | 4h |
